# ORL_et_Prisc

How a schedule from Planner changed from version to version. A marks actual dates.

## Version 1 (saved 2015-04-17)

Note of the change: + ‘orl_et_priscv1.planner’

| ID | WBS | Task | Duration | Start | Finish | Predecessors | Complete | Constraint |
| --- | --- | --- | --- | --- | --- | --- | --- | --- |
| 1 |  | Plan Electricité |  | 2015-04-08 | 2015-04-08 |  |  |  |
| 2 |  | Plan Plomberie |  | 2015-04-08 | 2015-04-08 |  |  |  |
| 3 |  | Plan Revêtements de sol |  | 2015-04-08 | 2015-04-08 |  |  |  |
| 4 |  | Lister les menuiseries |  | 2015-04-08 | 2015-04-08 |  |  |  |
| 5 |  | Devis Isopaille |  | 2015-04-08 | 2015-04-08 |  |  |  |
| 6 |  | Devis Fermettes |  | 2015-04-08 | 2015-04-08 |  |  |  |
| 7 | 7 | **En attendant la signature** |  | 2015-04-08 | 2015-04-13 |  |  |  |
| 8 | 7.1 | **Plan pour paille** |  | 2015-04-08 | 2015-04-08 |  |  |  |
| 9 |  | Vues en plan (paires et impaires, pleines ou pas, fenêtres) |  | 2015-04-08 | 2015-04-08 |  |  |  |
| 10 |  | Vues façades |  | 2015-04-08 | 2015-04-08 |  |  |  |
| 11 |  | Plan d'implantation |  | 2015-04-08 | 2015-04-08 |  |  |  |
| 12 | 7.3 | **Plan pour debit bois** |  | 2015-04-08 | 2015-04-13 |  |  |  |
| 13 | 7.3.1 | **Plan Ossature bois - Façade Sud** |  | 2015-04-08 | 2015-04-08 |  |  |  |
| 14 |  | Plan de détail |  | 2015-04-08 | 2015-04-08 |  |  |  |
| 15 |  | Plan façade |  | 2015-04-08 | 2015-04-08 |  |  |  |
| 16 |  | Plan Ossature bois - SAS |  | 2015-04-09 | 2015-04-09 | 13 |  |  |
| 17 |  | Plan Carport |  | 2015-04-10 | 2015-04-13 | 22 |  |  |
| 18 | 7.3.4 | **Plan Charpente poutre I Maison** |  | 2015-04-09 | 2015-04-09 | 16 |  |  |
| 19 |  | Vue en plan |  | 2015-04-09 | 2015-04-09 |  |  |  |
| 20 |  | Vue en coupe |  | 2015-04-09 | 2015-04-09 |  | 100% |  |
| 21 | 7.3.5 | **Plan Charpente poutre I Musique** |  | 2015-04-09 | 2015-04-09 | 18 |  |  |
| 22 |  | Vue en plan |  | 2015-04-09 | 2015-04-09 |  |  |  |
| 23 |  | Vue en coupe |  | 2015-04-09 | 2015-04-09 |  | 100% |  |
| 24 | 7.3.6 | **Plan lisse basse** |  | 2015-04-08 | 2015-04-08 |  |  |  |
| 25 | 7.3.6.1 | **Vue en plan** |  | 2015-04-08 | 2015-04-08 |  |  |  |
| 26 |  | Passages des sangles de précompression |  | 2015-04-08 | 2015-04-08 |  |  |  |
| 27 |  | Passages des sangles définitives |  | 2015-04-08 | 2015-04-08 |  |  |  |
| 28 |  | Calepinage OSB |  | 2015-04-08 | 2015-04-08 |  |  |  |
| 29 |  | Entretoises + support de broche |  | 2015-04-08 | 2015-04-08 |  |  |  |
| 30 |  | Plan de détail |  | 2015-04-08 | 2015-04-08 |  | 100% |  |
| 31 | 7.3.7 | **Plan lisse haute** |  | 2015-04-08 | 2015-04-08 |  |  |  |
| 32 | 7.3.7.1 | **Vue en plan** |  | 2015-04-08 | 2015-04-08 |  |  |  |
| 33 |  | Passages de sangles de précompression |  | 2015-04-08 | 2015-04-08 |  |  |  |
| 34 |  | Passages de sangles définitives |  | 2015-04-08 | 2015-04-08 |  |  |  |
| 35 |  | Calepinage OSB |  | 2015-04-08 | 2015-04-08 |  |  |  |
| 36 |  | Croisement des lisses |  | 2015-04-08 | 2015-04-08 |  |  |  |
| 37 |  | Plan de détail |  | 2015-04-08 | 2015-04-08 |  | 100% |  |
| 38 |  | Plan liaison SAS |  | 2015-04-08 | 2015-04-08 |  |  |  |
| 39 | 7.4 | **Plan Fondations** |  | 2015-04-08 | 2015-04-08 |  |  |  |
| 40 |  | Plan d'évacuation des EU |  | 2015-04-08 | 2015-04-08 |  |  |  |
| 41 |  | Plan de décaissement |  | 2015-04-08 | 2015-04-08 |  |  |  |
| 42 |  | Signature terrain | 0d | 2015-05-06 | 2015-05-06 |  |  | must start on 2015-05-06 |
| 43 | 9 | **Préparer et lancer les commandes** |  | 2015-04-08 | 2015-04-08 |  |  |  |
| 44 |  | Terrassement, matériaux fondations, lot bois, paille, quincaillerie, bambou, toiture végétalisée, menuiserie, électricité, plomberie |  | 2015-04-08 | 2015-04-08 |  |  |  |
| 45 |  | Mettre en place un planning de livraisons |  | 2015-04-08 | 2015-04-08 |  |  |  |
| 46 | 11 | **Travaux** |  | 2015-04-08 | 2015-04-08 |  |  |  |
| 47 |  | Mise en place du compteur temporaire de chantier |  | 2015-04-08 | 2015-04-08 |  |  |  |
| 48 |  | Mise n place d'un compteur d'eau et bec de cygne |  | 2015-04-08 | 2015-04-08 |  |  |  |
| 49 |  | Implantations (avec outillage de mesure, les piquets, ...) |  | 2015-04-08 | 2015-04-08 |  |  |  |
| 50 |  | Préparation réception des matériaux |  | 2015-04-08 | 2015-04-08 |  |  |  |
| 51 |  | Terrassement du chemin d'accès |  | 2015-04-08 | 2015-04-08 |  |  |  |
| 52 |  | Passages VRD (tranchée technique, regard intermédiaire, tabouret) et anti-retour |  | 2015-04-08 | 2015-04-08 |  |  |  |
| 53 |  | Terrassement des constructions |  | 2015-04-08 | 2015-04-08 |  |  |  |
| 54 |  | Stockage de la terre végétale |  | 2015-04-08 | 2015-04-08 |  |  |  |
| 55 | 11.9 | **Mises en oeuvre de la fondation** |  | 2015-04-08 | 2015-04-08 |  |  |  |
| 56 |  | Pose du film géotextile en fond de terrassement |  | 2015-04-08 | 2015-04-08 |  |  |  |
| 57 |  | Pose des réseaux de drainage (tubes et regards) |  | 2015-04-08 | 2015-04-08 |  |  |  |
| 58 |  | Mise en place d'un premier niveau de pouzzolane 20/40 et dammage |  | 2015-04-08 | 2015-04-08 |  |  |  |
| 59 |  | Mise en place du réseau d'évacuation des EU diam. 100 |  | 2015-04-08 | 2015-04-08 |  |  |  |
| 60 |  | Mise en place de la prise d'air du poêle |  | 2015-04-08 | 2015-04-08 |  |  |  |
| 61 |  | Répartition de la tranchée technique dans les constructions |  | 2015-04-08 | 2015-04-08 |  |  |  |
| 62 |  | Mise en place du réseau d'alimentation eau chaude / froide |  | 2015-04-08 | 2015-04-08 |  |  |  |
| 63 |  | Mise en place d'un deuxième niveau de pouzzolane 20/40 et dammage |  | 2015-04-08 | 2015-04-08 |  |  |  |
| 64 |  | Mise en place du réseau élec + eau de la récupération d'eau + trop plein |  | 2015-04-08 | 2015-04-08 |  |  |  |
| 65 |  | Mise en place de la couche de finition de pouzzolane 7/15 et dammage |  | 2015-04-08 | 2015-04-08 |  |  |  |
| 66 |  | Fiche d'auto-contrôle |  | 2015-04-08 | 2015-04-08 |  |  |  |
| 67 |  | Collecte de palettes + bâches de protection lieux de stockage et construction |  | 2015-04-08 | 2015-04-08 |  |  |  |
| 68 |  | Création de zones de stockage pour l'outillage et la quincaillerie |  | 2015-04-08 | 2015-04-08 |  |  |  |
| 69 | 11.12 | **Organisation d'une zone de travail du lot bois et stockage** |  | 2015-04-08 | 2015-04-08 |  |  |  |
| 70 |  | Stockage livraison bois |  | 2015-04-08 | 2015-04-08 |  |  |  |

| ID | WBS | Task | Start | Finish |
| --- | --- | --- | --- | --- |
| 71 |  | Tri et ventilation | 2015-04-08 | 2015-04-08 |
| 72 |  | Production | 2015-04-08 | 2015-04-08 |
| 73 |  | Stockage des éléments terminés | 2015-04-08 | 2015-04-08 |
| 74 | 11.13 | **Organisation d'une zone de stockage des bottes de paille** | 2015-04-08 | 2015-04-08 |
| 75 |  | Fabrication des aiguilles spécifiques de reconditionnement des bottes + liens | 2015-04-08 | 2015-04-08 |
| 76 | 11.14 | **Préfabrication et organisation avant mise en oeuvre** | 2015-04-08 | 2015-04-08 |
| 77 |  | Fabrication Lisses basses, entretoises et panneaux | 2015-04-08 | 2015-04-08 |
| 78 |  | Fabrication Lisses hautes, entretoises et panneaux | 2015-04-08 | 2015-04-08 |
| 79 |  | Fabrication des précadres | 2015-04-08 | 2015-04-08 |
| 80 |  | Fabrication des angles de précompression | 2015-04-08 | 2015-04-08 |
| 81 |  | Fabrication Poutres en I ou fermettes | 2015-04-08 | 2015-04-08 |
| 82 |  | Fabrication des broches, aiguilles (Bambou / Noisettier droit, ...) et agraphes | 2015-04-08 | 2015-04-08 |
| 83 | 11.15 | **Mise en oeuvre hors d'eau hors d'air** | 2015-04-08 | 2015-04-08 |
| 84 | 11.15.1 | **Lisses basses** | 2015-04-08 | 2015-04-08 |
| 85 |  | Pose d'un grillage petite maille sous les lisses et la maison + retour sur lisses | 2015-04-08 | 2015-04-08 |
| 86 |  | Mise en place de la bande d'arase sous les lisses basses | 2015-04-08 | 2015-04-08 |
| 87 |  | Assemblage des lisses basses | 2015-04-08 | 2015-04-08 |
| 88 |  | Percement des trous pour tubes de précompression | 2015-04-08 | 2015-04-08 |
| 89 |  | Pose des broches et isolation intérieure granulat de liège | 2015-04-08 | 2015-04-08 |
| 90 | 11.15.2 | **Pose des angles de compression** | 2015-04-08 | 2015-04-08 |
| 91 |  | CV + contrôle aplombs | 2015-04-08 | 2015-04-08 |
| 92 | 11.15.3 | **Pose des précadres** | 2015-04-08 | 2015-04-08 |
| 93 |  | CV + contrôle aplombs | 2015-04-08 | 2015-04-08 |
| 94 | 11.15.4 | **Elevation des murs paille** | 2015-04-08 | 2015-04-08 |
| 95 |  | Tri et contrôle physique des bottes (dimensions, propreté, dentisé, humidité) : fiche d'auto-contrôle | 2015-04-08 | 2015-04-08 |
| 96 |  | Taille des bottes pour précadres et pose du premier rang sur broches | 2015-04-08 | 2015-04-08 |
| 97 |  | Pose des rangs 2, 3 et 4, compris la pose des agraphes dans les angles de chaque rang et contrôle de l'aplomb | 2015-04-08 | 2015-04-08 |
| 98 |  | Pose des aiguilles | 2015-04-08 | 2015-04-08 |
| 99 |  | Pose des rangs 5, 6 et 7, compris la pose des agraphes dans les angles de chaque rang et contrôle de l'aplomb | 2015-04-08 | 2015-04-08 |
| 100 | 11.15.5 | **Lisses hautes** | 2015-04-08 | 2015-04-08 |
| 101 |  | Raccourcir les précadres | 2015-04-08 | 2015-04-08 |
| 102 |  | Assemblage des lisses hautes sur le mur | 2015-04-08 | 2015-04-08 |
| 103 |  | Percement des trous des passages des aiguilles dans l'OSB, à l'aide d'une scie cloche suivant diamètre des aiguilles (3-4 cm) | 2015-04-08 | 2015-04-08 |
| 104 |  | Mise en place des aiguilles | 2015-04-08 | 2015-04-08 |
| 105 |  | Fixation des butées d'aiguilles | 2015-04-08 | 2015-04-08 |
| 106 |  | Contrôle de l'aplomb | 2015-04-08 | 2015-04-08 |
| 107 |  | Isolation des lises hautes en granulat de liège | 2015-04-08 | 2015-04-08 |
| 108 | 11.15.6 | **Précompression des murs** | 2015-04-08 | 2015-04-08 |
| 109 |  | Contrôle des hauteurs avant précompression suivant protocole de mesure | 2015-04-08 | 2015-04-08 |
| 110 |  | Positionnement des sangles définitives et boucles en attente | 2015-04-08 | 2015-04-08 |
| 111 |  | Mise en place des barres basses et hautes de précompression en commençant par les angles, et des sangles de fret | 2015-04-08 | 2015-04-08 |
| 112 |  | Précompressions des angles | 2015-04-08 | 2015-04-08 |
| 113 |  | Contrôle des hauteurs et des niveaux : détermination d'un point de référence de niveau avec laser et pige | 2015-04-08 | 2015-04-08 |
| 114 |  | Précompression des longueurs | 2015-04-08 | 2015-04-08 |
| 115 |  | Contrôle des hauteurs et des niveaux suivant point de référence | 2015-04-08 | 2015-04-08 |
| 116 |  | Nouvelle précompression à optimiser et contrôle de niveaux | 2015-04-08 | 2015-04-08 |
| 117 |  | Mise en tension des sangles définitives et contrôle des niveaux et aplomb des murs au persuadeur | 2015-04-08 | 2015-04-08 |
| 118 |  | Fermeture de la lisse haute | 2015-04-08 | 2015-04-08 |
| 119 | 11.15.7 | **Ossature bois façade sud et sas d'entrée** | 2015-04-08 | 2015-04-08 |
| 120 |  | Pose d'un grillage petite maille sous les lisses et la maison + retour sur lisses | 2015-04-08 | 2015-04-08 |
| 121 |  | Mise en place de la bande d'arase sous les lisses basses | 2015-04-08 | 2015-04-08 |
| 122 |  | Mesure de la hauteur du mur paille pour adapter la hauteur de l'ossature | 2015-04-08 | 2015-04-08 |
| 123 |  | Préfabrication des modules au sol et levage | 2015-04-08 | 2015-04-08 |
| 124 |  | Raccords MOB + PP et fixations | 2015-04-08 | 2015-04-08 |
| 125 | 11.15.8 | **Charpente** | 2015-04-08 | 2015-04-08 |
| 126 |  | Pose Poutres en I | 2015-04-08 | 2015-04-08 |
| 127 |  | Ossature SAS | 2015-04-08 | 2015-04-08 |
| 128 |  | Carport | 2015-04-08 | 2015-04-08 |

## Version 2 (saved 2015-05-09)

Note of the change: / ‘rl_et_priscv1.planner’

Last finish 2015-05-06 → 2015-05-13 (+7d).

Changed:

| ID | Task | Start | Finish | Predecessors |
| --- | --- | --- | --- | --- |
| 46 | **Travaux** |  | 2015-04-08 → 2015-05-13 (+35d) |  |
| 55 | **Mises en oeuvre de la fondation** |  | 2015-04-08 → 2015-04-22 (+14d) |  |
| 57 | Pose des réseaux de drainage (tubes et regards) | 2015-04-08 → 2015-04-09 (+1d) | 2015-04-08 → 2015-04-09 (+1d) | none → 56 |
| 58 | Mise en place d'un premier niveau de pouzzolane 20/40 et dammage | 2015-04-08 → 2015-04-10 (+2d) | 2015-04-08 → 2015-04-10 (+2d) | none → 57 |
| 59 | Mise en place du réseau d'évacuation des EU diam. 100 | 2015-04-08 → 2015-04-13 (+5d) | 2015-04-08 → 2015-04-13 (+5d) | none → 58 |
| 60 | Mise en place de la prise d'air du poêle | 2015-04-08 → 2015-04-14 (+6d) | 2015-04-08 → 2015-04-14 (+6d) | none → 59 |
| 61 | Répartition de la tranchée technique dans les constructions | 2015-04-08 → 2015-04-15 (+7d) | 2015-04-08 → 2015-04-15 (+7d) | none → 60 |
| 62 | Mise en place du réseau d'alimentation eau chaude / froide | 2015-04-08 → 2015-04-16 (+8d) | 2015-04-08 → 2015-04-16 (+8d) | none → 61 |
| 63 | Mise en place d'un deuxième niveau de pouzzolane 20/40 et dammage | 2015-04-08 → 2015-04-17 (+9d) | 2015-04-08 → 2015-04-17 (+9d) | none → 62 |
| 64 | Mise en place du réseau élec + eau de la récupération d'eau + trop plein | 2015-04-08 → 2015-04-20 (+12d) | 2015-04-08 → 2015-04-20 (+12d) | none → 63 |
| 65 | Mise en place de la couche de finition de pouzzolane 7/15 et dammage | 2015-04-08 → 2015-04-21 (+13d) | 2015-04-08 → 2015-04-21 (+13d) | none → 64 |
| 66 | Fiche d'auto-contrôle | 2015-04-08 → 2015-04-22 (+14d) | 2015-04-08 → 2015-04-22 (+14d) | none → 65 |
| 67 | Collecte de palettes + bâches de protection lieux de stockage et construction | 2015-04-08 → 2015-04-23 (+15d) | 2015-04-08 → 2015-04-23 (+15d) | none → 66 |
| 68 | Création de zones de stockage pour l'outillage et la quincaillerie | 2015-04-08 → 2015-04-24 (+16d) | 2015-04-08 → 2015-04-24 (+16d) | none → 67 |
| 83 | **Mise en oeuvre hors d'eau hors d'air** |  | 2015-04-08 → 2015-05-13 (+35d) |  |
| 84 | **Lisses basses** |  | 2015-04-08 → 2015-04-14 (+6d) |  |
| 86 | Mise en place de la bande d'arase sous les lisses basses | 2015-04-08 → 2015-04-09 (+1d) | 2015-04-08 → 2015-04-09 (+1d) | none → 85 |
| 87 | Assemblage des lisses basses | 2015-04-08 → 2015-04-10 (+2d) | 2015-04-08 → 2015-04-10 (+2d) | none → 86 |
| 88 | Percement des trous pour tubes de précompression | 2015-04-08 → 2015-04-13 (+5d) | 2015-04-08 → 2015-04-13 (+5d) | none → 87 |
| 89 | Pose des broches et isolation intérieure granulat de liège | 2015-04-08 → 2015-04-14 (+6d) | 2015-04-08 → 2015-04-14 (+6d) | none → 88 |
| 90 | **Pose des angles de compression** | 2015-04-08 → 2015-04-15 (+7d) | 2015-04-08 → 2015-04-15 (+7d) |  |
| 91 | CV + contrôle aplombs | 2015-04-08 → 2015-04-15 (+7d) | 2015-04-08 → 2015-04-15 (+7d) | none → 89 |
| 92 | **Pose des précadres** | 2015-04-08 → 2015-04-16 (+8d) | 2015-04-08 → 2015-04-16 (+8d) |  |
| 93 | CV + contrôle aplombs | 2015-04-08 → 2015-04-16 (+8d) | 2015-04-08 → 2015-04-16 (+8d) | none → 91 |
| 94 | **Elevation des murs paille** | 2015-04-08 → 2015-04-17 (+9d) | 2015-04-08 → 2015-04-23 (+15d) |  |
| 95 | Tri et contrôle physique des bottes (dimensions, propreté, dentisé, humidité) : fiche d'auto-contrôle | 2015-04-08 → 2015-04-17 (+9d) | 2015-04-08 → 2015-04-17 (+9d) | none → 93 |
| 96 | Taille des bottes pour précadres et pose du premier rang sur broches | 2015-04-08 → 2015-04-20 (+12d) | 2015-04-08 → 2015-04-20 (+12d) | none → 95 |
| 97 | Pose des rangs 2, 3 et 4, compris la pose des agraphes dans les angles de chaque rang et contrôle de l'aplomb | 2015-04-08 → 2015-04-21 (+13d) | 2015-04-08 → 2015-04-21 (+13d) | none → 96 |
| 98 | Pose des aiguilles | 2015-04-08 → 2015-04-22 (+14d) | 2015-04-08 → 2015-04-22 (+14d) | none → 97 |
| 99 | Pose des rangs 5, 6 et 7, compris la pose des agraphes dans les angles de chaque rang et contrôle de l'aplomb | 2015-04-08 → 2015-04-23 (+15d) | 2015-04-08 → 2015-04-23 (+15d) | none → 98 |
| 100 | **Lisses hautes** | 2015-04-08 → 2015-04-24 (+16d) | 2015-04-08 → 2015-05-04 (+26d) |  |
| 101 | Raccourcir les précadres | 2015-04-08 → 2015-04-24 (+16d) | 2015-04-08 → 2015-04-24 (+16d) | none → 99 |
| 102 | Assemblage des lisses hautes sur le mur | 2015-04-08 → 2015-04-27 (+19d) | 2015-04-08 → 2015-04-27 (+19d) | none → 101 |
| 103 | Percement des trous des passages des aiguilles dans l'OSB, à l'aide d'une scie cloche suivant diamètre des aiguilles (3-4 cm) | 2015-04-08 → 2015-04-28 (+20d) | 2015-04-08 → 2015-04-28 (+20d) | none → 102 |
| 104 | Mise en place des aiguilles | 2015-04-08 → 2015-04-29 (+21d) | 2015-04-08 → 2015-04-29 (+21d) | none → 103 |
| 105 | Fixation des butées d'aiguilles | 2015-04-08 → 2015-04-30 (+22d) | 2015-04-08 → 2015-04-30 (+22d) | none → 104 |
| 106 | Contrôle de l'aplomb | 2015-04-08 → 2015-05-01 (+23d) | 2015-04-08 → 2015-05-01 (+23d) | none → 105 |
| 107 | Isolation des lises hautes en granulat de liège | 2015-04-08 → 2015-05-04 (+26d) | 2015-04-08 → 2015-05-04 (+26d) | none → 106 |
| 108 | **Précompression des murs** |  | 2015-04-08 → 2015-05-13 (+35d) |  |
| 109 | Contrôle des hauteurs avant précompression suivant protocole de mesure | 2015-04-08 → 2015-05-05 (+27d) | 2015-04-08 → 2015-05-05 (+27d) | none → 107 |
| 110 | Positionnement des sangles définitives et boucles en attente | 2015-04-08 → 2015-05-06 (+28d) | 2015-04-08 → 2015-05-06 (+28d) | none → 109 |
| 111 | Mise en place des barres basses et hautes de précompression en commençant par les angles, et des sangles de fret | 2015-04-08 → 2015-05-07 (+29d) | 2015-04-08 → 2015-05-07 (+29d) | none → 110 |
| 112 | Précompressions des angles | 2015-04-08 → 2015-05-08 (+30d) | 2015-04-08 → 2015-05-08 (+30d) | none → 111 |
| 113 | Contrôle des hauteurs et des niveaux : détermination d'un point de référence de niveau avec laser et pige | 2015-04-08 → 2015-05-11 (+33d) | 2015-04-08 → 2015-05-11 (+33d) | none → 112 |
| 114 | Précompression des longueurs | 2015-04-08 → 2015-05-12 (+34d) | 2015-04-08 → 2015-05-12 (+34d) | none → 113 |
| 115 | Contrôle des hauteurs et des niveaux suivant point de référence | 2015-04-08 → 2015-05-13 (+35d) | 2015-04-08 → 2015-05-13 (+35d) | none → 114 |

## Version 3 (saved 2015-06-10)

Note of the change: / ‘orl_et_priscv1.planner’

Last finish 2015-05-13 → 2015-07-10 (+58d).

Changed:

| ID | Task | Start | Finish | Predecessors | Other |
| --- | --- | --- | --- | --- | --- |
| 46 | **Travaux** |  | 2015-05-13 → 2015-07-10 (+58d) |  |  |
| 48 | Mise n place d'un compteur d'eau et bec de cygne | 2015-04-08 → 2015-04-09 (+1d) | 2015-04-08 → 2015-04-09 (+1d) | none → 47 |  |
| 49 | Implantations (avec outillage de mesure, les piquets, ...) | 2015-04-08 → 2015-06-16 (+69d) | 2015-04-08 → 2015-06-16 (+69d) |  | constraint none → must start on 2015-06-16 |
| 50 | Préparation réception des matériaux | 2015-04-08 → 2015-06-17 (+70d) | 2015-04-08 → 2015-06-17 (+70d) | none → 49 |  |
| 51 | Terrassement du chemin d'accès | 2015-04-08 → 2015-06-18 (+71d) | 2015-04-08 → 2015-06-18 (+71d) | none → 50 |  |
| 52 | Passages VRD (tranchée technique, regard intermédiaire, tabouret) et anti-retour | 2015-04-08 → 2015-06-19 (+72d) | 2015-04-08 → 2015-06-19 (+72d) | none → 51 |  |
| 53 | Terrassement des constructions | 2015-04-08 → 2015-06-22 (+75d) | 2015-04-08 → 2015-06-22 (+75d) | none → 52 |  |
| 54 | Stockage de la terre végétale | 2015-04-08 → 2015-06-23 (+76d) | 2015-04-08 → 2015-06-23 (+76d) | none → 53 |  |
| 55 | **Mises en oeuvre de la fondation** | 2015-04-08 → 2015-06-24 (+77d) | 2015-04-22 → 2015-07-08 (+77d) | none → 54 |  |
| 56 | Pose du film géotextile en fond de terrassement | 2015-04-08 → 2015-06-24 (+77d) | 2015-04-08 → 2015-06-24 (+77d) |  |  |
| 57 | Pose des réseaux de drainage (tubes et regards) | 2015-04-09 → 2015-06-25 (+77d) | 2015-04-09 → 2015-06-25 (+77d) |  |  |
| 58 | Mise en place d'un premier niveau de pouzzolane 20/40 et dammage | 2015-04-10 → 2015-06-26 (+77d) | 2015-04-10 → 2015-06-26 (+77d) |  |  |
| 59 | Mise en place du réseau d'évacuation des EU diam. 100 | 2015-04-13 → 2015-06-29 (+77d) | 2015-04-13 → 2015-06-29 (+77d) |  |  |
| 60 | Mise en place de la prise d'air du poêle | 2015-04-14 → 2015-06-30 (+77d) | 2015-04-14 → 2015-06-30 (+77d) |  |  |
| 61 | Répartition de la tranchée technique dans les constructions | 2015-04-15 → 2015-07-01 (+77d) | 2015-04-15 → 2015-07-01 (+77d) |  |  |
| 62 | Mise en place du réseau d'alimentation eau chaude / froide | 2015-04-16 → 2015-07-02 (+77d) | 2015-04-16 → 2015-07-02 (+77d) |  |  |
| 63 | Mise en place d'un deuxième niveau de pouzzolane 20/40 et dammage | 2015-04-17 → 2015-07-03 (+77d) | 2015-04-17 → 2015-07-03 (+77d) |  |  |
| 64 | Mise en place du réseau élec + eau de la récupération d'eau + trop plein | 2015-04-20 → 2015-07-06 (+77d) | 2015-04-20 → 2015-07-06 (+77d) |  |  |
| 65 | Mise en place de la couche de finition de pouzzolane 7/15 et dammage | 2015-04-21 → 2015-07-07 (+77d) | 2015-04-21 → 2015-07-07 (+77d) |  |  |
| 66 | Fiche d'auto-contrôle | 2015-04-22 → 2015-07-08 (+77d) | 2015-04-22 → 2015-07-08 (+77d) |  |  |
| 67 | Collecte de palettes + bâches de protection lieux de stockage et construction | 2015-04-23 → 2015-07-09 (+77d) | 2015-04-23 → 2015-07-09 (+77d) |  |  |
| 68 | Création de zones de stockage pour l'outillage et la quincaillerie | 2015-04-24 → 2015-07-10 (+77d) | 2015-04-24 → 2015-07-10 (+77d) |  |  |

## Version 4 (saved 2015-06-10)

Note of the change: / ‘orl_et_priscv1.planner’

Last finish 2015-07-10 → 2015-06-17 (-23d).

Changed:

| ID | Task | Start | Finish | Predecessors | Other |
| --- | --- | --- | --- | --- | --- |
| 46 | **Travaux** |  | 2015-07-10 → 2015-06-17 (-23d) |  |  |
| 47 | Mise en place du compteur temporaire de chantier | 2015-04-08 → 2015-06-15 (+68d) | 2015-04-08 → 2015-06-15 (+68d) |  | constraint none → must start on 2015-06-15 |
| 48 | Mise n place d'un compteur d'eau et bec de cygne | 2015-04-09 → 2015-06-15 (+67d) | 2015-04-09 → 2015-06-15 (+67d) | 47 → none | constraint none → must start on 2015-06-15 |
| 50 | Préparation réception des matériaux |  |  | 49 → none | constraint none → must start on 2015-06-17 |
| 51 | Terrassement du chemin d'accès | 2015-06-18 → 2015-04-08 (-71d) | 2015-06-18 → 2015-04-08 (-71d) | 50 → none |  |
| 52 | Passages VRD (tranchée technique, regard intermédiaire, tabouret) et anti-retour | 2015-06-19 → 2015-04-09 (-71d) | 2015-06-19 → 2015-04-09 (-71d) |  |  |
| 53 | Terrassement des constructions | 2015-06-22 → 2015-04-10 (-73d) | 2015-06-22 → 2015-04-10 (-73d) |  |  |
| 54 | Stockage de la terre végétale | 2015-06-23 → 2015-04-13 (-71d) | 2015-06-23 → 2015-04-13 (-71d) |  |  |
| 55 | **Mises en oeuvre de la fondation** | 2015-06-24 → 2015-04-14 (-71d) | 2015-07-08 → 2015-04-28 (-71d) |  |  |
| 56 | Pose du film géotextile en fond de terrassement | 2015-06-24 → 2015-04-14 (-71d) | 2015-06-24 → 2015-04-14 (-71d) |  |  |
| 57 | Pose des réseaux de drainage (tubes et regards) | 2015-06-25 → 2015-04-15 (-71d) | 2015-06-25 → 2015-04-15 (-71d) |  |  |
| 58 | Mise en place d'un premier niveau de pouzzolane 20/40 et dammage | 2015-06-26 → 2015-04-16 (-71d) | 2015-06-26 → 2015-04-16 (-71d) |  |  |
| 59 | Mise en place du réseau d'évacuation des EU diam. 100 | 2015-06-29 → 2015-04-17 (-73d) | 2015-06-29 → 2015-04-17 (-73d) |  |  |
| 60 | Mise en place de la prise d'air du poêle | 2015-06-30 → 2015-04-20 (-71d) | 2015-06-30 → 2015-04-20 (-71d) |  |  |
| 61 | Répartition de la tranchée technique dans les constructions | 2015-07-01 → 2015-04-21 (-71d) | 2015-07-01 → 2015-04-21 (-71d) |  |  |
| 62 | Mise en place du réseau d'alimentation eau chaude / froide | 2015-07-02 → 2015-04-22 (-71d) | 2015-07-02 → 2015-04-22 (-71d) |  |  |
| 63 | Mise en place d'un deuxième niveau de pouzzolane 20/40 et dammage | 2015-07-03 → 2015-04-23 (-71d) | 2015-07-03 → 2015-04-23 (-71d) |  |  |
| 64 | Mise en place du réseau élec + eau de la récupération d'eau + trop plein | 2015-07-06 → 2015-04-24 (-73d) | 2015-07-06 → 2015-04-24 (-73d) |  |  |
| 65 | Mise en place de la couche de finition de pouzzolane 7/15 et dammage | 2015-07-07 → 2015-04-27 (-71d) | 2015-07-07 → 2015-04-27 (-71d) |  |  |
| 66 | Fiche d'auto-contrôle | 2015-07-08 → 2015-04-28 (-71d) | 2015-07-08 → 2015-04-28 (-71d) |  |  |
| 67 | Collecte de palettes + bâches de protection lieux de stockage et construction | 2015-07-09 → 2015-04-29 (-71d) | 2015-07-09 → 2015-04-29 (-71d) |  |  |
| 68 | Création de zones de stockage pour l'outillage et la quincaillerie | 2015-07-10 → 2015-04-30 (-71d) | 2015-07-10 → 2015-04-30 (-71d) |  |  |

## Version 5 (saved 2015-06-10)

Note of the change: / ‘orl_et_priscv1.planner’

Last finish 2015-06-17 → 2015-07-10 (+23d).

Changed:

| ID | Task | Start | Finish | Predecessors |
| --- | --- | --- | --- | --- |
| 46 | **Travaux** |  | 2015-06-17 → 2015-07-10 (+23d) |  |
| 51 | Terrassement du chemin d'accès | 2015-04-08 → 2015-06-18 (+71d) | 2015-04-08 → 2015-06-18 (+71d) | none → 50 |
| 52 | Passages VRD (tranchée technique, regard intermédiaire, tabouret) et anti-retour | 2015-04-09 → 2015-06-19 (+71d) | 2015-04-09 → 2015-06-19 (+71d) |  |
| 53 | Terrassement des constructions | 2015-04-10 → 2015-06-22 (+73d) | 2015-04-10 → 2015-06-22 (+73d) |  |
| 54 | Stockage de la terre végétale | 2015-04-13 → 2015-06-23 (+71d) | 2015-04-13 → 2015-06-23 (+71d) |  |
| 55 | **Mises en oeuvre de la fondation** | 2015-04-14 → 2015-06-24 (+71d) | 2015-04-28 → 2015-07-08 (+71d) |  |
| 56 | Pose du film géotextile en fond de terrassement | 2015-04-14 → 2015-06-24 (+71d) | 2015-04-14 → 2015-06-24 (+71d) |  |
| 57 | Pose des réseaux de drainage (tubes et regards) | 2015-04-15 → 2015-06-25 (+71d) | 2015-04-15 → 2015-06-25 (+71d) |  |
| 58 | Mise en place d'un premier niveau de pouzzolane 20/40 et dammage | 2015-04-16 → 2015-06-26 (+71d) | 2015-04-16 → 2015-06-26 (+71d) |  |
| 59 | Mise en place du réseau d'évacuation des EU diam. 100 | 2015-04-17 → 2015-06-29 (+73d) | 2015-04-17 → 2015-06-29 (+73d) |  |
| 60 | Mise en place de la prise d'air du poêle | 2015-04-20 → 2015-06-30 (+71d) | 2015-04-20 → 2015-06-30 (+71d) |  |
| 61 | Répartition de la tranchée technique dans les constructions | 2015-04-21 → 2015-07-01 (+71d) | 2015-04-21 → 2015-07-01 (+71d) |  |
| 62 | Mise en place du réseau d'alimentation eau chaude / froide | 2015-04-22 → 2015-07-02 (+71d) | 2015-04-22 → 2015-07-02 (+71d) |  |
| 63 | Mise en place d'un deuxième niveau de pouzzolane 20/40 et dammage | 2015-04-23 → 2015-07-03 (+71d) | 2015-04-23 → 2015-07-03 (+71d) |  |
| 64 | Mise en place du réseau élec + eau de la récupération d'eau + trop plein | 2015-04-24 → 2015-07-06 (+73d) | 2015-04-24 → 2015-07-06 (+73d) |  |
| 65 | Mise en place de la couche de finition de pouzzolane 7/15 et dammage | 2015-04-27 → 2015-07-07 (+71d) | 2015-04-27 → 2015-07-07 (+71d) |  |
| 66 | Fiche d'auto-contrôle | 2015-04-28 → 2015-07-08 (+71d) | 2015-04-28 → 2015-07-08 (+71d) |  |
| 67 | Collecte de palettes + bâches de protection lieux de stockage et construction | 2015-04-29 → 2015-07-09 (+71d) | 2015-04-29 → 2015-07-09 (+71d) |  |
| 68 | Création de zones de stockage pour l'outillage et la quincaillerie | 2015-04-30 → 2015-07-10 (+71d) | 2015-04-30 → 2015-07-10 (+71d) |  |
